# 総合力表示

How a schedule from a web Gantt chart changed from version to version. A marks actual dates.

## Version 1 (saved 2024-03-25)

| ID | WBS | Task | Duration | Start | Finish | Complete |
| --- | --- | --- | --- | --- | --- | --- |
| 2 | 1 | **Dev Lock(実装〆)** | 26d | 2024-01-22 | 2024-02-26 | 100% |
| 3 | 1.1 | **企画** | 25d | 2024-01-22 | 2024-02-23 | 100% |
| 4 |  | 機能概要作成 | 3d | 2024-01-22 | 2024-01-24 | 100% |
| 5 |  | 機能概要社内合意 | 1d | 2024-01-25 | 2024-01-25 | 100% |
| 6 |  | 機能概要EA合意 | 1d | 2024-01-26 | 2024-01-26 | 100% |
| 7 |  | 機能仕様作成 | 2d | 2024-01-29 | 2024-01-30 | 100% |
| 8 |  | 機能仕様読み合わせ | 1d | 2024-01-31 | 2024-01-31 | 100% |
| 9 |  | 仕様詳細詰め | 3d | 2024-01-31 | 2024-02-02 | 100% |
| 10 |  | 仕様PR化 | 9d | 2024-02-05 | 2024-02-15 | 100% |
| 11 |  | チームレビュー設定 | 1d | 2024-02-13 | 2024-02-13 | 100% |
| 12 |  | 文言正式化 | 3d | 2024-02-14 | 2024-02-16 | 100% |
| 13 |  | Tips設計 | 3d | 2024-02-13 | 2024-02-15 | 100% |
| 14 |  | Tips発注 | 2d | 2024-02-15 | 2024-02-16 | 100% |
| 15 |  | Tipsマスタ入力 | 2d | 2024-02-15 | 2024-02-16 | 100% |
| 16 |  | テスト観点レビュー | 1d | 2024-02-14 | 2024-02-14 | 100% |
| 17 |  | テストケースレビュー | 1d | 2024-02-16 | 2024-02-16 | 100% |
| 18 |  | 機能検品（チームレビュー） | 1d | 2024-02-16 | 2024-02-16 | 100% |
| 19 |  | dev-lockまでのバグ、修正対応 | 4d | 2024-02-19 | 2024-02-22 | 100% |
| 20 |  | dev-lockまでのバグ修正確認 | 5d | 2024-02-19 | 2024-02-23 | 100% |
| 21 | 1.2 | **開発** | 13d | 2024-02-08 | 2024-02-26 | 100% |
| 22 |  | 機能開発 | 6d | 2024-02-08 | 2024-02-15 | 100% |
| 23 |  | 演出対応 | 4d | 2024-02-16 | 2024-02-21 | 100% |
| 24 |  | テスト観点レビュー | 1d | 2024-02-14 | 2024-02-14 | 100% |
| 25 |  | テストケースレビュー | 1d | 2024-02-16 | 2024-02-16 | 100% |
| 26 |  | 機能検品 | 1d | 2024-02-16 | 2024-02-16 | 100% |
| 27 | 1.2.6 | **dev-lockまでのバグ、修正対応** | 6d | 2024-02-19 | 2024-02-26 | 100% |
| 28 |  | チケット879 演出中他機能遷移 | 6d | 2024-02-19 | 2024-02-26 | 100% |
| 29 |  | チケット881 デッキ表示の分け | 6d | 2024-02-19 | 2024-02-26 | 100% |
| 30 |  | チケット883 タップ時SE再生 | 6d | 2024-02-19 | 2024-02-26 | 100% |
| 31 | 1.3 | **制作** | 18d | 2024-01-31 | 2024-02-23 | 100% |
| 32 | 1.3.1 | **UI** | 18d | 2024-01-31 | 2024-02-23 | 100% |
| 33 |  | UI社内設計 | 2d | 2024-01-31 | 2024-02-01 | 100% |
| 34 |  | UI社内合意 | 2d | 2024-02-01 | 2024-02-02 | 100% |
| 35 |  | UIEA調整 | 1d | 2024-02-07 | 2024-02-07 | 100% |
| 36 |  | UI指示書作成 | 5d | 2024-02-05 | 2024-02-09 | 100% |
| 37 |  | UI prefab作成（納品完了まで） | 5d | 2024-02-05 | 2024-02-09 | 100% |
| 38 |  | テスト観点レビュー | 1d | 2024-02-14 | 2024-02-14 | 100% |
| 39 |  | テストケースレビュー | 2d | 2024-02-15 | 2024-02-16 | 100% |
| 40 |  | 機能検品 | 1d | 2024-02-16 | 2024-02-16 | 100% |
| 41 |  | dev-lockまでのバグ、修正対応 | 5d | 2024-02-19 | 2024-02-23 | 100% |
| 42 | 1.3.2 | **演出** | 16d | 2024-02-02 | 2024-02-23 | 100% |
| 43 |  | 演出社内設計 | 1d | 2024-02-02 | 2024-02-02 | 100% |
| 44 |  | 演出社内合意 | 2d | 2024-02-05 | 2024-02-06 | 100% |
| 45 |  | 演出EA調整、確認 | 3d | 2024-02-07 | 2024-02-09 | 100% |
| 46 |  | 演出指示書（草案組み換え用）作成 | 4d | 2024-02-06 | 2024-02-09 | 100% |
| 47 |  | 演出素材作成（納品完了まで） | 9d | 2024-02-06 | 2024-02-16 | 100% |
| 48 |  | 演出指示書（本番用）更新 | 2d | 2024-02-15 | 2024-02-16 | 100% |
| 49 |  | テスト観点レビュー | 1d | 2024-02-14 | 2024-02-14 | 100% |
| 50 |  | テストケースレビュー | 1d | 2024-02-16 | 2024-02-16 | 100% |
| 51 |  | 機能検品 | 1d | 2024-02-16 | 2024-02-16 | 100% |
| 52 |  | 本番演出検品 | 2d | 2024-02-22 | 2024-02-23 | 100% |
| 53 |  | dev-lockまでのバグ、修正対応 | 5d | 2024-02-19 | 2024-02-23 | 100% |
| 54 | 1.4 | **テストチーム** | 19d | 2024-01-31 | 2024-02-26 | 100% |
| 55 |  | テスト観点作成 | 8d | 2024-01-31 | 2024-02-09 | 100% |
| 56 |  | テスト観点レビュー依頼 | 3d | 2024-02-09 | 2024-02-13 | 100% |
| 57 |  | テスト観点レビュー対応 | 2d | 2024-02-14 | 2024-02-15 | 100% |
| 58 |  | テストケース作成 | 2d | 2024-02-14 | 2024-02-15 | 100% |
| 59 |  | テストケースレビュー依頼 | 1d | 2024-02-15 | 2024-02-15 | 100% |
| 60 |  | テストケースレビュー対応 | 1d | 2024-02-19 | 2024-02-19 | 100% |
| 61 |  | テスト | 4d | 2024-02-19 | 2024-02-22 | 100% |
| 62 |  | dev-lockまでのバグ、修正確認 | 5d | 2024-02-20 | 2024-02-26 | 100% |
| 63 | 1.5 | **ほか工程** | 1d | 2024-02-26 | 2024-02-26 | 100% |
| 64 |  | dev-lockバイナリ提出 | 1d | 2024-02-26 | 2024-02-26 | 100% |
| 65 | 2 | **Soft Lock(バイナリ用アセット〆)** | 5d | 2024-02-26 | 2024-03-01 | 73% |
| 66 | 2.1 | **企画** | 3d | 2024-02-28 | 2024-03-01 | 29% |
| 67 |  | 演出の機能検品 | 2d | 2024-02-28 | 2024-02-29 | 100% |
| 68 |  | Tips検品 | 2d | 2024-02-28 | 2024-02-29 |  |
| 69 |  | 機能修正確認 | 3d | 2024-02-28 | 2024-03-01 |  |
| 70 | 2.2 | **開発** | 4d | 2024-02-26 | 2024-02-29 | 100% |
| 71 | 2.2.1 | **ソフトロックまでバグ対応** | 4d | 2024-02-26 | 2024-02-29 | 100% |

| ID | WBS | Task | Duration | Start | Finish | Complete |
| --- | --- | --- | --- | --- | --- | --- |
| 72 |  | チケット879 演出中他機能遷移 | 4d | 2024-02-26 | 2024-02-29 | 100% |
| 73 |  | チケット881 デッキ表示の分け | 4d | 2024-02-26 | 2024-02-29 | 100% |
| 74 |  | チケット883 タップ時SE再生 | 4d | 2024-02-26 | 2024-02-29 | 100% |
| 75 |  | チケット972 チーム総合力表示のボタンを押下した際の白く反転する演出がない | 3d | 2024-02-26 | 2024-02-28 | 100% |
| 76 |  | チケット981 総合力表示枠の数字が更新されない場合がある | 3d | 2024-02-26 | 2024-02-28 | 100% |
| 77 | 2.3 | **制作** | 4d | 2024-02-26 | 2024-02-29 | 33% |
| 78 |  | Tips制作納品 | 4d | 2024-02-26 | 2024-02-29 |  |
| 79 |  | 本番演出データ納品 | 2d | 2024-02-27 | 2024-02-28 | 100% |
| 80 | 2.4 | **テストチーム** | 5d | 2024-02-26 | 2024-03-01 | 83% |
| 81 |  | 演出テスト | 2d | 2024-02-29 | 2024-03-01 | 100% |
| 82 |  | Tipsテスト | 2d | 2024-02-29 | 2024-03-01 |  |
| 83 | 2.4.3 | **バグチケ対応済み確認** | 4d | 2024-02-26 | 2024-02-29 | 100% |
| 84 |  | チケット881 デッキ表示の分け | 4d | 2024-02-26 | 2024-02-29 | 100% |
| 85 |  | チケット981 総合力表示枠の数字が更新されない場合がある | 4d | 2024-02-26 | 2024-02-29 | 100% |
| 86 | 2.5 | **ほか工程** | 1d | 2024-03-01 | 2024-03-01 |  |
| 87 |  | ソフトロックバイナリ提出 | 1d | 2024-03-01 | 2024-03-01 |  |
| 88 | 3 | **Hard Lock** | 5d | 2024-03-04 | 2024-03-08 |  |
| 89 | 3.1 | **企画** | 4d | 2024-03-04 | 2024-03-07 |  |
| 90 |  | 機能接続確認 | 2d | 2024-03-04 | 2024-03-05 |  |
| 91 |  | バグ修正確認 | 4d | 2024-03-04 | 2024-03-07 |  |
| 92 |  | Tips検品 | 1d | 2024-03-04 | 2024-03-04 |  |
| 93 | 3.2 | **開発** | 4d | 2024-03-04 | 2024-03-07 |  |
| 94 |  | 残りバグ対応 | 4d | 2024-03-04 | 2024-03-07 |  |
| 95 | 3.3 | **制作** | 4d | 2024-03-04 | 2024-03-07 |  |
| 96 |  | 制作関連バグ対応 | 4d | 2024-03-04 | 2024-03-07 |  |
| 97 |  | Tips制作 | 1d | 2024-03-04 | 2024-03-04 |  |
| 98 | 3.4 | **テストチーム** | 5d | 2024-03-04 | 2024-03-08 |  |
| 99 |  | バグ修正確認 | 5d | 2024-03-04 | 2024-03-08 |  |
| 100 | 3.5 | **ほか工程** | 1d | 2024-03-08 | 2024-03-08 |  |
| 101 |  | ハードロックバイナリ提出 | 1d | 2024-03-08 | 2024-03-08 |  |

## Version 2 (saved 2024-03-25)

Last finish stays 2024-03-08. Complete tasks 64 → 77.

Changed:

| ID | Task | Complete |
| --- | --- | --- |
| 65 | **Soft Lock(バイナリ用アセット〆)** | 73% → 100% |
| 66 | **企画** | 29% → 100% |
| 68 | Tips検品 | 0% → 100% |
| 69 | 機能修正確認 | 0% → 100% |
| 77 | **制作** | 33% → 100% |
| 78 | Tips制作納品 | 0% → 100% |
| 80 | **テストチーム** | 83% → 100% |
| 82 | Tipsテスト | 0% → 100% |
| 86 | **ほか工程** | 0% → 100% |
| 87 | ソフトロックバイナリ提出 | 0% → 100% |
| 88 | **Hard Lock** | 0% → 100% |
| 89 | **企画** | 0% → 100% |
| 90 | 機能接続確認 | 0% → 100% |
| 91 | バグ修正確認 | 0% → 100% |
| 92 | Tips検品 | 0% → 100% |
| 93 | **開発** | 0% → 100% |
| 94 | 残りバグ対応 | 0% → 100% |
| 95 | **制作** | 0% → 100% |
| 96 | 制作関連バグ対応 | 0% → 100% |
| 97 | Tips制作 | 0% → 100% |
| 98 | **テストチーム** | 0% → 100% |
| 99 | バグ修正確認 | 0% → 100% |
| 100 | **ほか工程** | 0% → 100% |
| 101 | ハードロックバイナリ提出 | 0% → 100% |

## Version 3 (saved 2024-03-25)

Last finish stays 2024-03-08. Complete tasks 77 → 67.

Changed:

| ID | Task | Complete |
| --- | --- | --- |
| 65 | **Soft Lock(バイナリ用アセット〆)** | 100% → 73% |
| 66 | **企画** | 100% → 29% |
| 68 | Tips検品 | 100% → 0% |
| 69 | 機能修正確認 | 100% → 0% |
| 77 | **制作** | 100% → 33% |
| 78 | Tips制作納品 | 100% → 0% |
| 80 | **テストチーム** | 100% → 83% |
| 82 | Tipsテスト | 100% → 0% |
| 86 | **ほか工程** | 100% → 0% |
| 87 | ソフトロックバイナリ提出 | 100% → 0% |
| 88 | **Hard Lock** | 100% → 27% |
| 89 | **企画** | 100% → 86% |
| 93 | **開発** | 100% → 0% |
| 94 | 残りバグ対応 | 100% → 0% |
| 95 | **制作** | 100% → 0% |
| 96 | 制作関連バグ対応 | 100% → 0% |
| 97 | Tips制作 | 100% → 0% |
| 98 | **テストチーム** | 100% → 0% |
| 99 | バグ修正確認 | 100% → 0% |
| 100 | **ほか工程** | 100% → 0% |
| 101 | ハードロックバイナリ提出 | 100% → 0% |

## Version 4 (saved 2024-03-25)

Last finish stays 2024-03-08. Complete tasks 67 → 72.

Changed:

| ID | Task | Complete |
| --- | --- | --- |
| 88 | **Hard Lock** | 27% → 100% |
| 89 | **企画** | 86% → 100% |
| 93 | **開発** | 0% → 100% |
| 94 | 残りバグ対応 | 0% → 100% |
| 95 | **制作** | 0% → 100% |
| 96 | 制作関連バグ対応 | 0% → 100% |
| 97 | Tips制作 | 0% → 100% |
| 98 | **テストチーム** | 0% → 100% |
| 99 | バグ修正確認 | 0% → 100% |
| 100 | **ほか工程** | 0% → 100% |
| 101 | ハードロックバイナリ提出 | 0% → 100% |

## Version 5 (saved 2024-03-25)

Last finish stays 2024-03-08. Complete tasks 72 → 77.

Changed:

| ID | Task | Complete |
| --- | --- | --- |
| 65 | **Soft Lock(バイナリ用アセット〆)** | 73% → 100% |
| 66 | **企画** | 29% → 100% |
| 68 | Tips検品 | 0% → 100% |
| 69 | 機能修正確認 | 0% → 100% |
| 77 | **制作** | 33% → 100% |
| 78 | Tips制作納品 | 0% → 100% |
| 80 | **テストチーム** | 83% → 100% |
| 82 | Tipsテスト | 0% → 100% |
| 86 | **ほか工程** | 0% → 100% |
| 87 | ソフトロックバイナリ提出 | 0% → 100% |
